# pm_project

Schedule from MS Project, 2020-12-13 to 2021-02-14, costs in ج.م.‏, A marks actual dates.

## Calendars

- mo_sala: Mon-Thu 09:00-17:00; Fri-Sat off; Sun 09:00-17:00.

## Resources

| Resource | Group | Rate |
| --- | --- | --- |
| mohamed salah | full_stack | 500 |
| micheal ishak | test | 500 |
| mohamed sad | plan | 200 |
| mohamed osama | full_stack | 600 |
| mohamed mohamed | full_stack | 550 |
| mohamed ibrahim | analysis | 350 |
| youssef ali | devops | 800 |
| windows 10 license |  | 5000 |
| server |  | 50000 |
| visual studio license |  | 1500 |

## Schedule

| ID | WBS | Task | Type | Duration | Start | Finish | Predecessors | Complete | Remaining | Baseline start | Baseline finish | Baseline duration | Total slack | Resources | Work | Actual work | Cost | Baseline cost | Actual cost | Deliver ables |
| --- | --- | --- | --- | --- | --- | --- | --- | --- | --- | --- | --- | --- | --- | --- | --- | --- | --- | --- | --- | --- |
| 1 | 001 | **Project** |  | 46d? | 2020-12-13 08:00 A | 2021-02-14 17:00 |  | 33% | 30.84d? | 2020-12-13 09:00 | 2021-02-10 17:00 | 44d? | 0d | windows 10 license; server; visual studio license | 712h | 264h | 402,300 | 378,700 | 132,701.24 |  |
| 2 | 001+1 | **Planning** |  | 4d | 2020-12-13 08:00 A | 2020-12-16 17:00 A |  | 100% |  | 2020-12-13 09:00 | 2020-12-16 17:00 | 4d |  |  | 32h | 32h | 6,400 | 6,400 | 6,400 |  |
| 3 | 001+1.1 | Baseline Project Plan (BPP) |  | 1d | 2020-12-13 08:00 A | 2020-12-13 17:00 A |  | 100% |  | 2020-12-13 09:00 | 2020-12-13 17:00 | 1d |  | mohamed sad | 8h | 8h | 1,600 | 1,600 | 1,600 |  |
| 4 | 001+1.2 | Project Scope Statement (PSS) |  | 2d | 2020-12-14 08:00 A | 2020-12-15 17:00 A | 3 | 100% |  | 2020-12-14 09:00 | 2020-12-15 17:00 | 2d |  | mohamed sad | 16h | 16h | 3,200 | 3,200 | 3,200 |  |
| 5 | 001+1.3 | Feasibility Study (FS) |  | 1d | 2020-12-16 08:00 A | 2020-12-16 17:00 A | 4 | 100% |  | 2020-12-16 09:00 | 2020-12-16 17:00 | 1d |  | mohamed sad | 8h | 8h | 1,600 | 1,600 | 1,600 | to mohamed ibrahim |
| 6 | 001+2 | **Analysis** |  | 5d? | 2020-12-17 08:00 A | 2020-12-23 17:00 A | 2 | 100% |  | 2020-12-17 09:00 | 2020-12-23 17:00 | 5d? |  |  | 72h | 72h | 35,800 | 31,000 | 35,800 |  |
| 7 | 001+2.1 | System Requirement Specification (SRS) |  | 2d | 2020-12-17 08:00 A | 2020-12-20 17:00 A |  | 100% |  | 2020-12-17 09:00 | 2020-12-20 17:00 | 2d |  | mohamed ibrahim | 16h | 16h | 5,600 | 5,600 | 5,600 | to salah_osama_micheal |
| 8 | 001+2.2 | Data and Process Modeling |  | 2d? | 2020-12-21 08:00 A | 2020-12-22 17:00 A | 7 | 100% |  | 2020-12-21 09:00 | 2020-12-21 17:00 | 1d? |  | mohamed osama | 16h | 16h | 9,600 | 4,800 | 9,600 |  |
| 9 | 001+2.3 | Object Modeling |  | 2d | 2020-12-21 08:00 A | 2020-12-22 17:00 A | 8SS | 100% |  | 2020-12-21 09:00 | 2020-12-22 17:00 | 2d |  | mohamed salah | 16h | 16h | 8,000 | 8,000 | 8,000 |  |
| 10 | 001+2.4 | Development Strategy |  | 3d | 2020-12-21 08:00 A | 2020-12-23 17:00 A | 8SS | 100% |  | 2020-12-21 09:00 | 2020-12-23 17:00 | 3d |  | micheal ishak [50%]; mohamed mohamed [50%] | 24h | 24h | 12,600 | 12,600 | 12,600 |  |
| 11 | 001+3 | **Design** |  | 15d? | 2020-12-24 08:00 A | 2021-01-13 17:00 | 6 | 97% | 0.44d? | 2020-12-24 09:00 | 2021-01-11 17:00 | 13d? | 0d |  | 168h | 160h | 76,400 | 60,000 | 71,600 |  |
| 12 | 001+3.1 | Project Architecture |  | 3d | 2020-12-24 08:00 A | 2020-12-28 17:00 A |  | 100% |  | 2020-12-24 09:00 | 2020-12-27 17:00 | 2d |  | mohamed osama; mohamed ibrahim | 48h | 48h | 22,800 | 15,200 | 22,800 |  |
| 13 | 001+3.2 | **UML-Diagrams** |  | 7d? | 2020-12-29 08:00 A | 2021-01-06 17:00 | 12 | 94% | 0.39d? | 2020-12-28 09:00 | 2021-01-05 17:00 | 7d? | 5d |  | 80h | 72h | 33,600 | 28,800 | 28,800 |  |
| 14 | 001+3.2.1 | Use Case Digram |  | 1d? | 2020-12-29 08:00 A | 2020-12-29 17:00 |  | 50% | 0.5d? | 2020-12-28 09:00 | 2020-12-28 17:00 | 1d? | 11d | mohamed salah; mohamed osama | 16h | 8h | 8,800 | 4,000 | 4,000 | to mohamed ibrahim |
| 15 | 001+3.2.2 | Class Digram |  | 3d | 2020-12-30 08:00 A | 2021-01-03 17:00 A | 14 | 100% |  | 2020-12-29 09:00 | 2020-12-31 17:00 | 3d |  | mohamed ibrahim | 24h | 24h | 8,400 | 8,400 | 8,400 | to mohamed sad |
| 16 | 001+3.2.3 | Sequence Digram |  | 2d | 2021-01-04 08:00 A | 2021-01-05 17:00 A | 15 | 100% |  | 2021-01-03 09:00 | 2021-01-04 17:00 | 2d |  | mohamed sad | 16h | 16h | 3,200 | 3,200 | 3,200 | to mohamed mohamed |
| 17 | 001+3.2.4 | Activity Digram |  | 3d | 2021-01-04 08:00 A | 2021-01-06 17:00 A | 15 | 100% |  | 2021-01-03 09:00 | 2021-01-05 17:00 | 3d |  | mohamed mohamed | 24h | 24h | 13,200 | 13,200 | 13,200 |  |
| 18 | 001+3.3 | ERD Digram |  | 5d | 2021-01-07 08:00 A | 2021-01-13 17:00 A | 13 | 100% |  | 2021-01-06 09:00 | 2021-01-11 17:00 | 4d |  | micheal ishak | 40h | 40h | 20,000 | 16,000 | 20,000 |  |
| 19 | 001+4 | **Development** |  | 14d? | 2021-01-14 08:00 A | 2021-02-02 17:00 | 11 |  | 14d? | 2021-01-12 09:00 | 2021-01-31 17:00 | 14d? | 0d |  | 280h |  | 141,600 | 141,600 |  |  |
| 20 | 001+4.1 | **phase one** |  | 8d? | 2021-01-14 08:00 A | 2021-01-25 17:00 |  |  | 8d? | 2021-01-12 09:00 | 2021-01-21 17:00 | 8d? | 0d |  | 232h |  | 117,600 | 117,600 |  |  |
| 21 | 001+4.1.1 | Admin Module |  | 8d | 2021-01-14 08:00 A | 2021-01-25 17:00 |  |  | 8d | 2021-01-12 09:00 | 2021-01-21 17:00 | 8d | 0d | mohamed salah | 64h |  | 32,000 | 32,000 |  | to all team |
| 22 | 001+4.1.2 | Student Module |  | 5d | 2021-01-14 08:00 A | 2021-01-20 17:00 | 21SS |  | 5d | 2021-01-12 09:00 | 2021-01-18 17:00 | 5d | 3d | mohamed osama | 40h |  | 24,000 | 24,000 |  |  |
| 23 | 001+4.1.3 | Professor Module |  | 6d? | 2021-01-14 08:00 A | 2021-01-21 17:00 | 21SS |  | 6d? | 2021-01-12 09:00 | 2021-01-19 17:00 | 6d? | 2d | youssef ali | 48h |  | 38,400 | 38,400 |  |  |
| 24 | 001+4.1.4 | Librarian Module |  | 6d | 2021-01-14 08:00 A | 2021-01-21 17:00 | 21SS |  | 6d | 2021-01-12 09:00 | 2021-01-19 17:00 | 6d | 2d | mohamed ibrahim | 48h |  | 16,800 | 16,800 |  |  |
| 25 | 001+4.1.5 | implementation of database |  | 4d | 2021-01-14 08:00 A | 2021-01-19 17:00 | 21SS |  | 4d | 2021-01-12 09:00 | 2021-01-17 17:00 | 4d | 4d | mohamed sad | 32h |  | 6,400 | 6,400 |  |  |
| 26 | 001+4.2 | Finishing phase 1 | milestone | 0d | 2021-01-25 17:00 | 2021-01-25 17:00 | 20 |  |  | 2021-01-21 17:00 | 2021-01-21 17:00 | 0d | 0d | micheal ishak |  |  |  |  |  |  |

| ID | WBS | Task | Duration | Start | Finish | Predecessors | Baseline start | Baseline finish | Baseline duration | Total slack | Constraint | Resources | Work | Cost | Baseline cost | Deliver ables |
| --- | --- | --- | --- | --- | --- | --- | --- | --- | --- | --- | --- | --- | --- | --- | --- | --- |
| 27 | 001+4.3 | **Phase two** | 6d | 2021-01-26 09:00 | 2021-02-02 17:00 | 26 | 2021-01-24 09:00 | 2021-01-31 17:00 | 6d | 0d |  |  | 48h | 24,000 | 24,000 |  |
| 28 | 001+4.3.1 | Login&Signup Module | 3d | 2021-01-26 09:00 | 2021-01-28 17:00 |  | 2021-01-24 09:00 | 2021-01-26 17:00 | 3d | 0d |  | mohamed salah | 24h | 12,000 | 12,000 | to micheal ishak |
| 29 | 001+4.3.2 | Identity Verfication | 3d | 2021-01-31 09:00 | 2021-02-02 17:00 | 28 | 2021-01-27 09:00 | 2021-01-31 17:00 | 3d | 0d |  | micheal ishak | 24h | 12,000 | 12,000 |  |
| 30 | 001+5 | **Testing and Security** | 4d | 2021-02-03 09:00 | 2021-02-08 17:00 | 19 | 2021-02-01 09:00 | 2021-02-04 17:00 | 4d | 0d |  |  | 104h | 64,800 | 62,400 |  |
| 31 | 001+5.1 | Unit Testing | 2d | 2021-02-03 09:00 | 2021-02-04 17:00 |  | 2021-02-01 09:00 | 2021-02-02 17:00 | 2d | 2d |  | micheal ishak | 16h | 8,000 | 8,000 |  |
| 32 | 001+5.2 | Integration Testing | 3d | 2021-02-03 09:00 | 2021-02-07 17:00 |  | 2021-02-01 09:00 | 2021-02-03 17:00 | 3d | 1d |  | mohamed osama | 24h | 14,400 | 12,000 |  |
| 33 | 001+5.3 | System Testing | 4d | 2021-02-03 09:00 | 2021-02-08 17:00 |  | 2021-02-01 09:00 | 2021-02-04 17:00 | 4d | 0d |  | youssef ali | 32h | 25,600 | 25,600 |  |
| 34 | 001+5.4 | User Acceptance Testing | 2d | 2021-02-03 09:00 | 2021-02-04 17:00 |  | 2021-02-01 09:00 | 2021-02-02 17:00 | 2d | 2d |  | mohamed mohamed; mohamed salah | 32h | 16,800 | 16,800 |  |
| 35 | 001+6 | **Deployment** | 4d | 2021-02-09 09:00 | 2021-02-14 17:00 | 30 | 2021-02-07 09:00 | 2021-02-10 17:00 | 4d | 0d |  |  | 56h | 20,800 | 20,800 |  |
| 36 | 001+6.1 | DB_deploment | 3d | 2021-02-09 09:00 | 2021-02-11 17:00 |  | 2021-02-07 09:00 | 2021-02-09 17:00 | 3d | 1d |  | mohamed sad | 24h | 4,800 | 4,800 |  |
| 37 | 001+6.2 | APP_deploment | 4d | 2021-02-09 09:00 | 2021-02-14 17:00 |  | 2021-02-07 09:00 | 2021-02-10 17:00 | 4d | 0d |  | mohamed salah [50%]; micheal ishak [50%] | 32h | 16,000 | 16,000 |  |
| 38 | 001+7 | **daily_meating** | 43.12d | 2020-12-13 09:00 | 2021-02-10 10:00 |  | 2020-12-13 09:00 | 2021-02-10 10:00 | 43.12d | 2.88d |  |  |  |  |  |  |
| 39 | 001+7.1 | daily_meating 1 | 1h | 2020-12-13 09:00 | 2020-12-13 10:00 |  | 2020-12-13 09:00 | 2020-12-13 10:00 | 1h | 45.88d | start no earlier than 2020-12-13 09:00 |  |  |  |  |  |
| 40 | 001+7.2 | daily_meating 2 | 1h | 2020-12-14 09:00 | 2020-12-14 10:00 |  | 2020-12-14 09:00 | 2020-12-14 10:00 | 1h | 44.88d | start no earlier than 2020-12-14 09:00 |  |  |  |  |  |
| 41 | 001+7.3 | daily_meating 3 | 1h | 2020-12-15 09:00 | 2020-12-15 10:00 |  | 2020-12-15 09:00 | 2020-12-15 10:00 | 1h | 43.88d | start no earlier than 2020-12-15 09:00 |  |  |  |  |  |
| 42 | 001+7.4 | daily_meating 4 | 1h | 2020-12-16 09:00 | 2020-12-16 10:00 |  | 2020-12-16 09:00 | 2020-12-16 10:00 | 1h | 42.88d | start no earlier than 2020-12-16 09:00 |  |  |  |  |  |
| 43 | 001+7.5 | daily_meating 5 | 1h | 2020-12-17 09:00 | 2020-12-17 10:00 |  | 2020-12-17 09:00 | 2020-12-17 10:00 | 1h | 41.88d | start no earlier than 2020-12-17 09:00 |  |  |  |  |  |
| 44 | 001+7.6 | daily_meating 6 | 1h | 2020-12-20 09:00 | 2020-12-20 10:00 |  | 2020-12-20 09:00 | 2020-12-20 10:00 | 1h | 40.88d | start no earlier than 2020-12-20 09:00 |  |  |  |  |  |
| 45 | 001+7.7 | daily_meating 7 | 1h | 2020-12-21 09:00 | 2020-12-21 10:00 |  | 2020-12-21 09:00 | 2020-12-21 10:00 | 1h | 39.88d | start no earlier than 2020-12-21 09:00 |  |  |  |  |  |
| 46 | 001+7.8 | daily_meating 8 | 1h | 2020-12-22 09:00 | 2020-12-22 10:00 |  | 2020-12-22 09:00 | 2020-12-22 10:00 | 1h | 38.88d | start no earlier than 2020-12-22 09:00 |  |  |  |  |  |
| 47 | 001+7.9 | daily_meating 9 | 1h | 2020-12-23 09:00 | 2020-12-23 10:00 |  | 2020-12-23 09:00 | 2020-12-23 10:00 | 1h | 37.88d | start no earlier than 2020-12-23 09:00 |  |  |  |  |  |
| 48 | 001+7.10 | daily_meating 10 | 1h | 2020-12-24 09:00 | 2020-12-24 10:00 |  | 2020-12-24 09:00 | 2020-12-24 10:00 | 1h | 36.88d | start no earlier than 2020-12-24 09:00 |  |  |  |  |  |
| 49 | 001+7.11 | daily_meating 11 | 1h | 2020-12-27 09:00 | 2020-12-27 10:00 |  | 2020-12-27 09:00 | 2020-12-27 10:00 | 1h | 35.88d | start no earlier than 2020-12-27 09:00 |  |  |  |  |  |
| 50 | 001+7.12 | daily_meating 12 | 1h | 2020-12-28 09:00 | 2020-12-28 10:00 |  | 2020-12-28 09:00 | 2020-12-28 10:00 | 1h | 34.88d | start no earlier than 2020-12-28 09:00 |  |  |  |  |  |
| 51 | 001+7.13 | daily_meating 13 | 1h | 2020-12-29 09:00 | 2020-12-29 10:00 |  | 2020-12-29 09:00 | 2020-12-29 10:00 | 1h | 33.88d | start no earlier than 2020-12-29 09:00 |  |  |  |  |  |
| 52 | 001+7.14 | daily_meating 14 | 1h | 2020-12-30 09:00 | 2020-12-30 10:00 |  | 2020-12-30 09:00 | 2020-12-30 10:00 | 1h | 32.88d | start no earlier than 2020-12-30 09:00 |  |  |  |  |  |
| 53 | 001+7.15 | daily_meating 15 | 1h | 2020-12-31 09:00 | 2020-12-31 10:00 |  | 2020-12-31 09:00 | 2020-12-31 10:00 | 1h | 31.88d | start no earlier than 2020-12-31 09:00 |  |  |  |  |  |
| 54 | 001+7.16 | daily_meating 16 | 1h | 2021-01-03 09:00 | 2021-01-03 10:00 |  | 2021-01-03 09:00 | 2021-01-03 10:00 | 1h | 30.88d | start no earlier than 2021-01-03 09:00 |  |  |  |  |  |
| 55 | 001+7.17 | daily_meating 17 | 1h | 2021-01-04 09:00 | 2021-01-04 10:00 |  | 2021-01-04 09:00 | 2021-01-04 10:00 | 1h | 29.88d | start no earlier than 2021-01-04 09:00 |  |  |  |  |  |
| 56 | 001+7.18 | daily_meating 18 | 1h | 2021-01-05 09:00 | 2021-01-05 10:00 |  | 2021-01-05 09:00 | 2021-01-05 10:00 | 1h | 28.88d | start no earlier than 2021-01-05 09:00 |  |  |  |  |  |
| 57 | 001+7.19 | daily_meating 19 | 1h | 2021-01-06 09:00 | 2021-01-06 10:00 |  | 2021-01-06 09:00 | 2021-01-06 10:00 | 1h | 27.88d | start no earlier than 2021-01-06 09:00 |  |  |  |  |  |
| 58 | 001+7.20 | daily_meating 20 | 1h | 2021-01-07 09:00 | 2021-01-07 10:00 |  | 2021-01-07 09:00 | 2021-01-07 10:00 | 1h | 26.88d | start no earlier than 2021-01-07 09:00 |  |  |  |  |  |
| 59 | 001+7.21 | daily_meating 21 | 1h | 2021-01-10 09:00 | 2021-01-10 10:00 |  | 2021-01-10 09:00 | 2021-01-10 10:00 | 1h | 25.88d | start no earlier than 2021-01-10 09:00 |  |  |  |  |  |
| 60 | 001+7.22 | daily_meating 22 | 1h | 2021-01-11 09:00 | 2021-01-11 10:00 |  | 2021-01-11 09:00 | 2021-01-11 10:00 | 1h | 24.88d | start no earlier than 2021-01-11 09:00 |  |  |  |  |  |
| 61 | 001+7.23 | daily_meating 23 | 1h | 2021-01-12 09:00 | 2021-01-12 10:00 |  | 2021-01-12 09:00 | 2021-01-12 10:00 | 1h | 23.88d | start no earlier than 2021-01-12 09:00 |  |  |  |  |  |
| 62 | 001+7.24 | daily_meating 24 | 1h | 2021-01-13 09:00 | 2021-01-13 10:00 |  | 2021-01-13 09:00 | 2021-01-13 10:00 | 1h | 22.88d | start no earlier than 2021-01-13 09:00 |  |  |  |  |  |
| 63 | 001+7.25 | daily_meating 25 | 1h | 2021-01-14 09:00 | 2021-01-14 10:00 |  | 2021-01-14 09:00 | 2021-01-14 10:00 | 1h | 21.88d | start no earlier than 2021-01-14 09:00 |  |  |  |  |  |
| 64 | 001+7.26 | daily_meating 26 | 1h | 2021-01-17 09:00 | 2021-01-17 10:00 |  | 2021-01-17 09:00 | 2021-01-17 10:00 | 1h | 20.88d | start no earlier than 2021-01-17 09:00 |  |  |  |  |  |
| 65 | 001+7.27 | daily_meating 27 | 1h | 2021-01-18 09:00 | 2021-01-18 10:00 |  | 2021-01-18 09:00 | 2021-01-18 10:00 | 1h | 19.88d | start no earlier than 2021-01-18 09:00 |  |  |  |  |  |
| 66 | 001+7.28 | daily_meating 28 | 1h | 2021-01-19 09:00 | 2021-01-19 10:00 |  | 2021-01-19 09:00 | 2021-01-19 10:00 | 1h | 18.88d | start no earlier than 2021-01-19 09:00 |  |  |  |  |  |
| 67 | 001+7.29 | daily_meating 29 | 1h | 2021-01-20 09:00 | 2021-01-20 10:00 |  | 2021-01-20 09:00 | 2021-01-20 10:00 | 1h | 17.88d | start no earlier than 2021-01-20 09:00 |  |  |  |  |  |
| 68 | 001+7.30 | daily_meating 30 | 1h | 2021-01-21 09:00 | 2021-01-21 10:00 |  | 2021-01-21 09:00 | 2021-01-21 10:00 | 1h | 16.88d | start no earlier than 2021-01-21 09:00 |  |  |  |  |  |
| 69 | 001+7.31 | daily_meating 31 | 1h | 2021-01-24 09:00 | 2021-01-24 10:00 |  | 2021-01-24 09:00 | 2021-01-24 10:00 | 1h | 15.88d | start no earlier than 2021-01-24 09:00 |  |  |  |  |  |
| 70 | 001+7.32 | daily_meating 32 | 1h | 2021-01-25 09:00 | 2021-01-25 10:00 |  | 2021-01-25 09:00 | 2021-01-25 10:00 | 1h | 14.88d | start no earlier than 2021-01-25 09:00 |  |  |  |  |  |
| 71 | 001+7.33 | daily_meating 33 | 1h | 2021-01-26 09:00 | 2021-01-26 10:00 |  | 2021-01-26 09:00 | 2021-01-26 10:00 | 1h | 13.88d | start no earlier than 2021-01-26 09:00 |  |  |  |  |  |
| 72 | 001+7.34 | daily_meating 34 | 1h | 2021-01-27 09:00 | 2021-01-27 10:00 |  | 2021-01-27 09:00 | 2021-01-27 10:00 | 1h | 12.88d | start no earlier than 2021-01-27 09:00 |  |  |  |  |  |
| 73 | 001+7.35 | daily_meating 35 | 1h | 2021-01-28 09:00 | 2021-01-28 10:00 |  | 2021-01-28 09:00 | 2021-01-28 10:00 | 1h | 11.88d | start no earlier than 2021-01-28 09:00 |  |  |  |  |  |
| 74 | 001+7.36 | daily_meating 36 | 1h | 2021-01-31 09:00 | 2021-01-31 10:00 |  | 2021-01-31 09:00 | 2021-01-31 10:00 | 1h | 10.88d | start no earlier than 2021-01-31 09:00 |  |  |  |  |  |
| 75 | 001+7.37 | daily_meating 37 | 1h | 2021-02-01 09:00 | 2021-02-01 10:00 |  | 2021-02-01 09:00 | 2021-02-01 10:00 | 1h | 9.88d | start no earlier than 2021-02-01 09:00 |  |  |  |  |  |
| 76 | 001+7.38 | daily_meating 38 | 1h | 2021-02-02 09:00 | 2021-02-02 10:00 |  | 2021-02-02 09:00 | 2021-02-02 10:00 | 1h | 8.88d | start no earlier than 2021-02-02 09:00 |  |  |  |  |  |
| 77 | 001+7.39 | daily_meating 39 | 1h | 2021-02-03 09:00 | 2021-02-03 10:00 |  | 2021-02-03 09:00 | 2021-02-03 10:00 | 1h | 7.88d | start no earlier than 2021-02-03 09:00 |  |  |  |  |  |
| 78 | 001+7.40 | daily_meating 40 | 1h | 2021-02-04 09:00 | 2021-02-04 10:00 |  | 2021-02-04 09:00 | 2021-02-04 10:00 | 1h | 6.88d | start no earlier than 2021-02-04 09:00 |  |  |  |  |  |
| 79 | 001+7.41 | daily_meating 41 | 1h | 2021-02-07 09:00 | 2021-02-07 10:00 |  | 2021-02-07 09:00 | 2021-02-07 10:00 | 1h | 5.88d | start no earlier than 2021-02-07 09:00 |  |  |  |  |  |
| 80 | 001+7.42 | daily_meating 42 | 1h | 2021-02-08 09:00 | 2021-02-08 10:00 |  | 2021-02-08 09:00 | 2021-02-08 10:00 | 1h | 4.88d | start no earlier than 2021-02-08 09:00 |  |  |  |  |  |
| 81 | 001+7.43 | daily_meating 43 | 1h | 2021-02-09 09:00 | 2021-02-09 10:00 |  | 2021-02-09 09:00 | 2021-02-09 10:00 | 1h | 3.88d | start no earlier than 2021-02-09 09:00 |  |  |  |  |  |
| 82 | 001+7.44 | daily_meating 44 | 1h | 2021-02-10 09:00 | 2021-02-10 10:00 |  | 2021-02-10 09:00 | 2021-02-10 10:00 | 1h | 2.88d | start no earlier than 2021-02-10 09:00 |  |  |  |  |  |
